# HR Portal

Schedule from MS Project, 2019-12-02 to 2020-07-15, status date 2020-01-30, costs in €, A marks actual dates.

## Calendars

- HR Portal: Mon-Fri 08:00-12:00, 13:00-17:00; Sat-Sun off. Exceptions (off unless hours are given): 2019-12-24 (Vespera Natal), 2019-12-25 (Natal), 2020-01-01 (Ano novo), 2020-04-10 (Pascoa), 2020-05-01 (Dia Trabalhador), 2020-06-10 (Dia Porutgal).

## Resources

| Resource | Rate |
| --- | --- |
| Project Sponsor |  |
| HRD Director |  |
| SID Director |  |
| ISTRetail Project Manager |  |
| Project Manager | 43.75 |
| Technical Coordinator | 31.25 |
| Scrum Master | 31.25 |
| HRD Delegate |  |
| ISTRetail Technical Coordinator |  |
| Consultant 1 (TC) | 18.75 |
| HR Employee Record Specialist |  |
| HR Training Management Specialist |  |
| HR Payroll Specialist |  |
| Consultant 2 (SM) | 18.75 |
| IT Infrastructure Specialist |  |
| Trainee (ISTRetail) |  |
| Trainee | 12.5 |
| Consultant 1 (SM) | 18.75 |
| Consultant 2 (TC) | 18.75 |

## Schedule

| ID | WBS | Task | Type | Duration | Start | Finish | Predecessors | Complete | Remaining | Baseline start | Baseline finish | Baseline duration | Total slack | Constraint | Resources | Work | Actual work | Cost | Baseline cost | Actual cost |
| --- | --- | --- | --- | --- | --- | --- | --- | --- | --- | --- | --- | --- | --- | --- | --- | --- | --- | --- | --- | --- |
| 1 | 1 | **Project Management** |  | 157d | 2019-12-02 A | 2020-07-15 |  | 54% | 72.46d | 2019-12-02 | 2020-06-30 | 146d | 0d |  |  | 528h | 304h | 9,725 | 10,075 | 5,400 |
| 2 | 1.1 | **Project Initiation** |  | 3d | 2019-12-02 A | 2019-12-04 A |  | 100% |  | 2019-12-02 | 2019-12-04 | 3d |  |  |  | 72h | 72h | 1,050 | 1,050 | 1,050 |
| 3 | 1.1.1 | Review Project Charter |  | 1d | 2019-12-02 A | 2019-12-02 A |  | 100% |  | 2019-12-02 | 2019-12-02 | 1d |  |  | Project Manager; ISTRetail Project Manager; Project Sponsor [50%]; HRD Director [50%]; SID Director [50%] | 28h | 28h | 350 | 350 | 350 |
| 4 | 1.1.2 | Review Stakeholders Identification |  | 1d | 2019-12-03 A | 2019-12-03 A | 3 | 100% |  | 2019-12-03 | 2019-12-03 | 1d |  |  | ISTRetail Project Manager; Project Sponsor [50%]; HRD Director [50%]; SID Director [50%]; Project Manager | 28h | 28h | 350 | 350 | 350 |
| 5 | 1.1.3 | Establish Project Team |  | 1d | 2019-12-04 A | 2019-12-04 A | 4 | 100% |  | 2019-12-04 | 2019-12-04 | 1d |  |  | ISTRetail Project Manager; Project Manager | 16h | 16h | 350 | 350 | 350 |
| 6 | 1.1.4 | Project Started | milestone | 0d | 2019-12-04 A | 2019-12-04 A | 5 | 100% |  | 2019-12-04 | 2019-12-04 | 0d |  |  |  |  |  |  |  |  |
| 7 | 1.2 | **Project Planning** |  | 9d | 2019-12-05 A | 2019-12-17 A |  | 100% |  | 2019-12-05 | 2019-12-11 | 5d |  |  |  | 136h | 136h | 2,250 | 2,250 | 2,250 |
| 8 | 1.2.1 | Review Project Scope and Time |  | 1d | 2019-12-05 A | 2019-12-05 A | 6 | 100% |  | 2019-12-05 | 2019-12-05 | 1d |  |  | ISTRetail Project Manager; Project Manager | 16h | 16h | 350 | 350 | 350 |
| 9 | 1.2.2 | Define Project Organization |  | 1d | 2019-12-06 A | 2019-12-06 A | 8 | 100% |  | 2019-12-06 | 2019-12-06 | 1d |  |  | ISTRetail Project Manager; Project Manager | 16h | 16h | 350 | 350 | 350 |
| 10 | 1.2.3 | Define Communication plan |  | 1d | 2019-12-09 A | 2019-12-09 A | 9 | 100% |  | 2019-12-09 | 2019-12-09 | 1d |  |  | ISTRetail Project Manager; Project Manager | 16h | 16h | 350 | 350 | 350 |
| 11 | 1.2.4 | Review Project Plan |  | 1d | 2019-12-16 A | 2019-12-16 A | 10 | 100% |  | 2019-12-10 | 2019-12-10 | 1d |  |  | ISTRetail Project Manager; Project Manager | 16h | 16h | 350 | 350 | 350 |
| 12 | 1.2.5 | Kick-off Meeting |  | 1d | 2019-12-17 A | 2019-12-17 A | 11 | 100% |  | 2019-12-11 | 2019-12-11 | 1d |  |  | Project Sponsor; HRD Director; SID Director; ISTRetail Project Manager; Project Manager; Technical Coordinator; Scrum Master; HRD Delegate; ISTRetail Technical Coordinator | 72h | 72h | 850 | 850 | 850 |
| 13 | 1.2.6 | Project Plan Approved | milestone | 0d | 2019-12-17 A | 2019-12-17 A | 12 | 100% |  | 2019-12-11 | 2019-12-11 | 0d |  |  |  |  |  |  |  |  |
| 14 | 1.3 | **Control** |  | 63d | 2019-12-20 A | 2020-03-20 |  | 43% | 36d | 2019-12-13 | 2020-03-20 | 68d | 80d |  |  | 224h | 96h | 4,900 | 5,250 | 2,100 |
| 15 | 1.3.1 | Control 1 |  | 1d | 2019-12-20 A | 2019-12-20 A |  | 100% |  | 2019-12-13 | 2019-12-13 | 1d |  | start no earlier than 2019-12-20 | ISTRetail Project Manager; Project Manager | 16h | 16h | 350 | 350 | 350 |
| 16 | 1.3.2 | Control 2 |  | 1d | 2019-12-27 A | 2019-12-27 A |  | 100% |  | 2019-12-20 | 2019-12-20 | 1d |  | start no earlier than 2019-12-27 | ISTRetail Project Manager; Project Manager | 16h | 16h | 350 | 350 | 350 |
| 17 | 1.3.3 | Control 3 |  | 1d | 2020-01-03 A | 2020-01-03 A |  | 100% |  | 2019-12-27 | 2019-12-27 | 1d |  | start no earlier than 2020-01-03 | ISTRetail Project Manager; Project Manager | 16h | 16h | 350 | 350 | 350 |
| 18 | 1.3.4 | Control 4 |  | 1d | 2020-01-10 A | 2020-01-10 A |  | 100% |  | 2020-01-03 | 2020-01-03 | 1d |  | start no earlier than 2020-01-10 | ISTRetail Project Manager; Project Manager | 16h | 16h | 350 | 350 | 350 |
| 19 | 1.3.5 | Control 5 |  | 1d | 2020-01-17 A | 2020-01-17 A |  | 100% |  | 2020-01-10 | 2020-01-10 | 1d |  | start no earlier than 2020-01-17 | ISTRetail Project Manager; Project Manager | 16h | 16h | 350 | 350 | 350 |
| 20 | 1.3.6 | Control 6 |  | 1d | 2020-01-24 A | 2020-01-24 A |  | 100% |  | 2020-01-17 | 2020-01-17 | 1d |  | start no earlier than 2020-01-24 | ISTRetail Project Manager; Project Manager | 16h | 16h | 350 | 350 | 350 |
| 21 | 1.3.7 | Control 7 |  | 1d | 2020-01-31 | 2020-01-31 |  |  |  | 2020-01-24 | 2020-01-24 | 1d | 115d | start no earlier than 2020-01-31 | ISTRetail Project Manager; Project Manager | 16h |  | 350 | 350 |  |
| 22 | 1.3.8 | Control 8 |  | 1d | 2020-02-07 | 2020-02-07 |  |  |  | 2020-01-31 | 2020-01-31 | 1d | 110d | start no earlier than 2020-02-07 | ISTRetail Project Manager; Project Manager | 16h |  | 350 | 350 |  |
| 23 | 1.3.9 | Control 9 |  | 1d | 2020-02-14 | 2020-02-14 |  |  |  | 2020-02-07 | 2020-02-07 | 1d | 105d | start no earlier than 2020-02-14 | ISTRetail Project Manager; Project Manager | 16h |  | 350 | 350 |  |
| 24 | 1.3.10 | Control 10 |  | 1d | 2020-02-21 | 2020-02-21 |  |  |  | 2020-02-14 | 2020-02-14 | 1d | 100d | start no earlier than 2020-02-21 | ISTRetail Project Manager; Project Manager | 16h |  | 350 | 350 |  |
| 25 | 1.3.11 | Control 11 |  | 1d | 2020-02-28 | 2020-02-28 |  |  |  | 2020-02-21 | 2020-02-21 | 1d | 95d | start no earlier than 2020-02-28 | ISTRetail Project Manager; Project Manager | 16h |  | 350 | 350 |  |
| 26 | 1.3.12 | Control 12 |  | 1d | 2020-03-06 | 2020-03-06 |  |  |  | 2020-02-28 | 2020-02-28 | 1d | 90d | start no earlier than 2020-03-06 | ISTRetail Project Manager; Project Manager | 16h |  | 350 | 350 |  |
| 27 | 1.3.13 | Control 13 |  | 1d | 2020-03-13 | 2020-03-13 |  |  |  | 2020-03-06 | 2020-03-06 | 1d | 85d | start no earlier than 2020-03-13 | ISTRetail Project Manager; Project Manager | 16h |  | 350 | 350 |  |
| 28 | 1.3.14 | Control 14 |  | 1d | 2020-03-20 | 2020-03-20 |  |  |  | 2020-03-13 | 2020-03-13 | 1d | 80d | start no earlier than 2020-03-20 | ISTRetail Project Manager; Project Manager | 16h |  | 350 | 350 |  |

| ID | WBS | Task | Type | Duration | Start | Finish | Predecessors | Complete | Baseline start | Baseline finish | Baseline duration | Total slack | Free slack | Resources | Work | Actual work | Cost | Baseline cost | Actual cost |
| --- | --- | --- | --- | --- | --- | --- | --- | --- | --- | --- | --- | --- | --- | --- | --- | --- | --- | --- | --- |
| 29 | 1.4 | **Project Close** |  | 66d | 2020-04-13 | 2020-07-15 |  |  | 2020-03-26 | 2020-06-30 | 66d | 0d |  |  | 96h |  | 1,525 | 1,525 |  |
| 30 | 1.4.1 | Review Project Objectives |  | 1d | 2020-04-13 | 2020-04-13 | 129 |  | 2020-03-26 | 2020-03-26 | 1d | 62d | 0d | Project Sponsor [50%]; HRD Director [50%]; SID Director [50%]; ISTRetail Project Manager; Project Manager; Technical Coordinator [50%]; ISTRetail Technical Coordinator; HRD Delegate | 48h |  | 475 | 475 |  |
| 31 | 1.4.2 | Collect Lessons Learned |  | 1d | 2020-04-14 | 2020-04-14 | 30 |  | 2020-03-27 | 2020-03-27 | 1d | 62d | 0d | ISTRetail Project Manager; Project Manager | 16h |  | 350 | 350 |  |
| 32 | 1.4.3 | Provide Feedback |  | 1d | 2020-04-15 | 2020-04-15 | 31 |  | 2020-03-30 | 2020-03-30 | 1d | 62d |  | ISTRetail Project Manager; Project Manager | 16h |  | 350 | 350 |  |
| 33 | 1.4.4 | Close Contracts |  | 1d | 2020-07-15 | 2020-07-15 | 32, 132 |  | 2020-06-30 | 2020-06-30 | 1d | 0d |  | ISTRetail Project Manager; Project Manager | 16h |  | 350 | 350 |  |
| 34 | 1.4.5 | Project Closed | milestone | 0d | 2020-07-15 | 2020-07-15 | 33 |  | 2020-06-30 | 2020-06-30 | 0d | 0d |  |  |  |  |  |  |  |
| 35 | 2 | **Definition** |  | 15d | 2019-12-18 A | 2020-01-10 A |  | 100% | 2019-12-12 | 2019-12-27 | 10d |  |  |  | 312h | 312h | 5,750 | 3,000 | 5,750 |
| 36 | 2.1 | **Analyse Actual Situation** |  | 5d | 2019-12-18 A | 2019-12-26 A |  | 100% | 2019-12-12 | 2019-12-18 | 5d |  |  |  | 88h | 88h | 1,500 | 1,500 | 1,500 |
| 37 | 2.1.1 | Describe processes for Employees Register |  | 1d | 2019-12-18 A | 2019-12-18 A | 13 | 100% | 2019-12-12 | 2019-12-12 | 1d |  |  | Technical Coordinator; HR Employee Record Specialist | 16h | 16h | 250 | 250 | 250 |
| 38 | 2.1.2 | Describe processes for Holidays and Absences |  | 1d | 2019-12-19 A | 2019-12-19 A | 37 | 100% | 2019-12-13 | 2019-12-13 | 1d |  |  | Technical Coordinator; HR Payroll Specialist | 16h | 16h | 250 | 250 | 250 |
| 39 | 2.1.3 | Describe processes for Training Management |  | 1d | 2019-12-20 A | 2019-12-20 A | 38 | 100% | 2019-12-16 | 2019-12-16 | 1d |  |  | Technical Coordinator; HR Training Management Specialist | 16h | 16h | 250 | 250 | 250 |
| 40 | 2.1.4 | Describe processes for Interface Implementation |  | 1d | 2019-12-23 A | 2019-12-23 A | 39 | 100% | 2019-12-17 | 2019-12-17 | 1d |  |  | Technical Coordinator; ISTRetail Technical Coordinator | 16h | 16h | 250 | 250 | 250 |
| 41 | 2.1.5 | Describe processes for Corporate Information |  | 1d | 2019-12-26 A | 2019-12-26 A | 40 | 100% | 2019-12-18 | 2019-12-18 | 1d |  |  | Technical Coordinator; Scrum Master; HRD Delegate | 24h | 24h | 500 | 500 | 500 |
| 42 | 2.1.6 | Described Current Processes | milestone | 0d | 2019-12-26 A | 2019-12-26 A | 41 | 100% | 2019-12-18 | 2019-12-18 | 0d |  |  |  |  |  |  |  |  |
| 43 | 2.2 | **Requirement Specification** |  | 10d | 2019-12-27 A | 2020-01-10 A |  | 100% | 2019-12-19 | 2019-12-27 | 5d |  |  |  | 224h | 224h | 4,250 | 1,500 | 4,250 |
| 44 | 2.2.1 | Gap Analysis For Each Module |  | 3d | 2019-12-27 A | 2019-12-31 A | 42 | 100% | 2019-12-19 | 2019-12-23 | 3d |  |  | Technical Coordinator; HRD Delegate | 48h | 48h | 750 | 750 | 750 |
| 45 | 2.2.2 | Identify Parameters That Will Be Used For Each Module |  | 1d | 2020-01-02 A | 2020-01-02 A | 44 | 100% | 2019-12-26 | 2019-12-26 | 1d |  |  | Technical Coordinator; HRD Delegate | 16h | 16h | 250 | 250 | 250 |
| 46 | 2.2.3 | ISHR interfaces specification |  | 5d | 2020-01-03 A | 2020-01-09 A | 45 | 100% |  |  |  |  |  | Consultant 1 (TC); Consultant 2 (TC); Technical Coordinator | 120h | 120h | 2,750 |  | 2,750 |
| 47 | 2.2.4 | Review project requirements |  | 1d | 2020-01-10 A | 2020-01-10 A | 46 | 100% | 2019-12-27 | 2019-12-27 | 1d |  |  | HRD Director [50%]; SID Director [50%]; Technical Coordinator; Scrum Master; HRD Delegate; ISTRetail Technical Coordinator | 40h | 40h | 500 | 500 | 500 |
| 48 | 2.2.5 | Reviewed Project Requirements | milestone | 0d | 2020-01-10 A | 2020-01-10 A | 47 | 100% | 2019-12-27 | 2019-12-27 | 0d |  |  |  |  |  |  |  |  |
| 49 | 3 | **Analysis & Design** |  | 6d | 2020-01-13 A | 2020-01-20 A |  | 100% | 2019-12-30 | 2020-01-07 | 6d |  |  |  | 108h | 108h | 1,500 | 1,500 | 1,500 |
| 50 | 3.1 | **Framework Interface Design** |  | 3d | 2020-01-13 A | 2020-01-15 A |  | 100% | 2019-12-30 | 2020-01-02 | 3d |  |  |  | 52h | 52h | 500 | 500 | 500 |
| 51 | 3.1.1 | Design the WebService |  | 1d | 2020-01-13 A | 2020-01-13 A | 48 | 100% | 2019-12-30 | 2019-12-30 | 1d |  |  | ISTRetail Technical Coordinator [50%]; Trainee (ISTRetail) | 12h | 12h |  |  |  |
| 52 | 3.1.2 | Design Interface To Access Employees' Data |  | 1d | 2020-01-14 A | 2020-01-14 A | 51 | 100% | 2019-12-31 | 2019-12-31 | 1d |  |  | ISTRetail Technical Coordinator [50%]; Technical Coordinator; Trainee (ISTRetail) | 20h | 20h | 250 | 250 | 250 |
| 53 | 3.1.3 | Design Interface To Access Employees' Salary |  | 1d | 2020-01-15 A | 2020-01-15 A | 52 | 100% | 2020-01-02 | 2020-01-02 | 1d |  |  | ISTRetail Technical Coordinator [50%]; Technical Coordinator; Trainee (ISTRetail) | 20h | 20h | 250 | 250 | 250 |
| 54 | 3.1.4 | Framework Interface Design Finished | milestone | 0d | 2020-01-15 A | 2020-01-15 A | 53 | 100% | 2020-01-02 | 2020-01-02 | 0d |  |  |  |  |  |  |  |  |

| ID | WBS | Task | Type | Duration | Start | Finish | Predecessors | Complete | Remaining | Baseline start | Baseline finish | Baseline duration | Total slack | Free slack | Resources | Work | Actual work | Cost | Baseline cost | Actual cost |
| --- | --- | --- | --- | --- | --- | --- | --- | --- | --- | --- | --- | --- | --- | --- | --- | --- | --- | --- | --- | --- |
| 55 | 3.2 | **Tests Specification** |  | 3d | 2020-01-16 A | 2020-01-20 A |  | 100% |  | 2020-01-03 | 2020-01-07 | 3d |  |  |  | 56h | 56h | 1,000 | 1,000 | 1,000 |
| 56 | 3.2.1 | Define Integration Tests |  | 1d | 2020-01-16 A | 2020-01-16 A | 54 | 100% |  | 2020-01-03 | 2020-01-03 | 1d |  |  | Technical Coordinator; Scrum Master; ISTRetail Technical Coordinator | 24h | 24h | 500 | 500 | 500 |
| 57 | 3.2.2 | Define System tests |  | 1d | 2020-01-17 A | 2020-01-17 A | 56 | 100% |  | 2020-01-06 | 2020-01-06 | 1d |  |  | Technical Coordinator; ISTRetail Technical Coordinator | 16h | 16h | 250 | 250 | 250 |
| 58 | 3.2.3 | Define Acceptance Tests |  | 1d | 2020-01-20 A | 2020-01-20 A | 57 | 100% |  | 2020-01-07 | 2020-01-07 | 1d |  |  | Technical Coordinator; HRD Delegate | 16h | 16h | 250 | 250 | 250 |
| 59 | 3.2.4 | Tests Specification Defined | milestone | 0d | 2020-01-20 A | 2020-01-20 A | 58 | 100% |  | 2020-01-07 | 2020-01-07 | 0d |  |  |  |  |  |  |  |  |
| 60 | 4 | **Realization** |  | 39d | 2020-01-21 A | 2020-03-13 |  | 22% | 30.45d | 2020-01-08 | 2020-02-27 | 37d | 0d |  |  | 2048h | 376h | 38,050 | 38,050 | 7,950 |
| 61 | 4.1 | **Employees Register** |  | 5d | 2020-01-21 A | 2020-01-27 A |  | 100% |  | 2020-01-08 | 2020-01-14 | 5d |  |  |  | 132h | 132h | 2,700 | 2,700 | 2,700 |
| 62 | 4.1.1 | Parametrize The Module |  | 1d | 2020-01-21 A | 2020-01-21 A | 59 | 100% |  | 2020-01-08 | 2020-01-08 | 1d |  |  | Technical Coordinator; HRD Delegate [50%] | 12h | 12h | 250 | 250 | 250 |
| 63 | 4.1.2 | Implement New Requirements |  | 2d | 2020-01-22 A | 2020-01-23 A | 62 | 100% |  | 2020-01-09 | 2020-01-10 | 2d |  |  | Technical Coordinator; Consultant 2 (TC); Consultant 1 (TC); Trainee | 64h | 64h | 1,300 | 1,300 | 1,300 |
| 64 | 4.1.3 | Implement Profile Configuration |  | 1d | 2020-01-24 A | 2020-01-24 A | 63 | 100% |  | 2020-01-13 | 2020-01-13 | 1d |  |  | Technical Coordinator; Consultant 2 (TC); Consultant 1 (TC); Trainee | 32h | 32h | 650 | 650 | 650 |
| 65 | 4.1.4 | Test The Implementation |  | 1d | 2020-01-27 A | 2020-01-27 A | 64 | 100% |  | 2020-01-14 | 2020-01-14 | 1d |  |  | Technical Coordinator; Trainee; Consultant 1 (TC) | 24h | 24h | 500 | 500 | 500 |
| 66 | 4.1.5 | Finished Module 1 Implementation | milestone | 0d | 2020-01-27 A | 2020-01-27 A | 65 | 100% |  | 2020-01-14 | 2020-01-14 | 0d |  |  |  |  |  |  |  |  |
| 67 | 4.2 | **Holidays and Absences** |  | 10d | 2020-01-28 A | 2020-02-10 |  | 30% | 7d | 2020-01-15 | 2020-01-28 | 10d | 2d |  |  | 272h | 64h | 5,400 | 5,400 | 1,150 |
| 68 | 4.2.1 | Parametrize The Module |  | 2d | 2020-01-28 A | 2020-01-29 A | 66 | 100% |  | 2020-01-15 | 2020-01-16 | 2d |  |  | Technical Coordinator; HRD Delegate | 32h | 32h | 500 | 500 | 500 |
| 69 | 4.2.2 | Implement New Requirements |  | 4d | 2020-01-30 A | 2020-02-04 | 68 | 25% | 3d | 2020-01-17 | 2020-01-22 | 4d | 2d | 0d | Technical Coordinator; Consultant 1 (TC); Consultant 2 (TC); Trainee | 128h | 32h | 2,600 | 2,600 | 650 |
| 70 | 4.2.3 | Implement Profile Configuration |  | 2d | 2020-02-05 | 2020-02-06 | 69 |  |  | 2020-01-23 | 2020-01-24 | 2d | 2d | 0d | Technical Coordinator; Consultant 1 (TC); Trainee; Consultant 2 (TC) | 64h |  | 1,300 | 1,300 |  |
| 71 | 4.2.4 | Test The Implementation |  | 2d | 2020-02-07 | 2020-02-10 | 70 |  |  | 2020-01-27 | 2020-01-28 | 2d | 2d | 0d | Technical Coordinator; Consultant 2 (TC); Trainee | 48h |  | 1,000 | 1,000 |  |
| 72 | 4.2.5 | Finished Module 2 Implementation | milestone | 0d | 2020-02-10 | 2020-02-10 | 71 |  |  | 2020-01-28 | 2020-01-28 | 0d | 2d | 0d |  |  |  |  |  |  |
| 73 | 4.3 | **Training Management** |  | 12d | 2020-02-11 | 2020-02-26 |  |  |  | 2020-01-29 | 2020-02-13 | 12d | 2d |  |  | 336h |  | 6,700 | 6,700 |  |
| 74 | 4.3.1 | Parametrize The Module |  | 2d | 2020-02-11 | 2020-02-12 | 72 |  |  | 2020-01-29 | 2020-01-30 | 2d | 2d | 0d | Technical Coordinator; HRD Delegate | 32h |  | 500 | 500 |  |
| 75 | 4.3.2 | Implement New Requirements |  | 4d | 2020-02-13 | 2020-02-18 | 74 |  |  | 2020-01-31 | 2020-02-05 | 4d | 2d | 0d | Technical Coordinator; Consultant 2 (TC); Consultant 1 (TC); Trainee | 128h |  | 2,600 | 2,600 |  |
| 76 | 4.3.3 | Create Script For Data Migration |  | 2d | 2020-02-19 | 2020-02-20 | 75 |  |  | 2020-02-06 | 2020-02-07 | 2d | 2d | 0d | Technical Coordinator; Consultant 2 (TC); Trainee; Consultant 1 (TC) | 64h |  | 1,300 | 1,300 |  |
| 77 | 4.3.4 | Allowance |  | 2d | 2020-02-21 | 2020-02-24 | 76 |  |  | 2020-02-10 | 2020-02-11 | 2d | 2d | 0d | Technical Coordinator; Consultant 1 (TC); Consultant 2 (TC); Trainee | 64h |  | 1,300 | 1,300 |  |
| 78 | 4.3.5 | Test The Implementation |  | 2d | 2020-02-25 | 2020-02-26 | 77 |  |  | 2020-02-12 | 2020-02-13 | 2d | 2d | 0d | Technical Coordinator; Consultant 1 (TC); Trainee | 48h |  | 1,000 | 1,000 |  |
| 79 | 4.3.6 | Finished Module 3 Implementation | milestone | 0d | 2020-02-26 | 2020-02-26 | 78 |  |  | 2020-02-13 | 2020-02-13 | 0d | 2d |  |  |  |  |  |  |  |

| ID | WBS | Task | Type | Duration | Start | Finish | Predecessors | Complete | Remaining | Baseline start | Baseline finish | Baseline duration | Total slack | Free slack | Constraint | Resources | Work | Actual work | Cost | Baseline cost | Actual cost |
| --- | --- | --- | --- | --- | --- | --- | --- | --- | --- | --- | --- | --- | --- | --- | --- | --- | --- | --- | --- | --- | --- |
| 80 | 4.4 | **Interface Implementation** |  | 5d | 2020-03-02 | 2020-03-06 |  |  |  | 2020-02-14 | 2020-02-20 | 5d | 0d |  |  |  | 136h |  | 500 | 500 |  |
| 81 | 4.4.1 | Implement the WebService |  | 1d | 2020-03-02 | 2020-03-02 | 79 |  |  | 2020-02-14 | 2020-02-14 | 1d | 0d |  | start no earlier than 2020-03-02 | ISTRetail Technical Coordinator; IT Infrastructure Specialist; Trainee (ISTRetail) | 24h |  |  |  |  |
| 82 | 4.4.2 | Implement the interface to access employees' Data |  | 1d | 2020-03-03 | 2020-03-03 | 81 |  |  | 2020-02-17 | 2020-02-17 | 1d | 0d |  |  | ISTRetail Technical Coordinator; IT Infrastructure Specialist; Trainee (ISTRetail); Technical Coordinator | 32h |  | 250 | 250 |  |
| 83 | 4.4.3 | Implement the interface to access employees' Salaries |  | 1d | 2020-03-04 | 2020-03-04 | 82 |  |  | 2020-02-18 | 2020-02-18 | 1d | 0d |  |  | ISTRetail Technical Coordinator; IT Infrastructure Specialist; Technical Coordinator; Trainee (ISTRetail) | 32h |  | 250 | 250 |  |
| 84 | 4.4.4 | Test The Implementation |  | 2d | 2020-03-05 | 2020-03-06 | 83 |  |  | 2020-02-19 | 2020-02-20 | 2d | 0d |  |  | ISTRetail Technical Coordinator; IT Infrastructure Specialist; Trainee (ISTRetail) | 48h |  |  |  |  |
| 85 | 4.4.5 | Finished Module 5 Implementation | milestone | 0d | 2020-03-06 | 2020-03-06 | 84 |  |  | 2020-02-20 | 2020-02-20 | 0d | 0d |  |  |  |  |  |  |  |  |
| 86 | 4.5 | **Corporate Information** |  | 31d | 2020-01-21 A | 2020-03-03 |  | 26% | 23d | 2020-01-08 | 2020-02-19 | 31d | 3d |  |  |  | 732h | 180h | 16,750 | 16,750 | 4,100 |
| 87 | 4.5.1 | Create Backlog |  | 1d | 2020-01-21 A | 2020-01-21 A | 59 | 100% |  | 2020-01-08 | 2020-01-08 | 1d |  |  |  | Scrum Master; HRD Delegate [50%] | 12h | 12h | 250 | 250 | 250 |
| 88 | 4.5.2 | **Sprint 1** |  | 10d | 2020-01-22 A | 2020-02-04 |  | 70% | 3d | 2020-01-09 | 2020-01-22 | 10d | 3d |  |  |  | 240h | 168h | 5,500 | 5,500 | 3,850 |
| 89 | 4.5.2.1 | Plan The Sprint |  | 1d | 2020-01-22 A | 2020-01-22 A | 87 | 100% |  | 2020-01-09 | 2020-01-09 | 1d |  |  |  | Scrum Master; Consultant 1 (SM); Consultant 2 (SM) | 24h | 24h | 550 | 550 | 550 |
| 90 | 4.5.2.2 | Realize The Sprint |  | 8d | 2020-01-23 A | 2020-02-03 | 89 | 75% | 2d | 2020-01-10 | 2020-01-21 | 8d | 3d | 0d |  | Scrum Master; Consultant 1 (SM); Consultant 2 (SM) | 192h | 144h | 4,400 | 4,400 | 3,300 |
| 91 | 4.5.2.3 | Review The Results |  | 1d | 2020-02-04 | 2020-02-04 | 90 |  |  | 2020-01-22 | 2020-01-22 | 1d | 3d | 0d |  | Scrum Master; Consultant 1 (SM); Consultant 2 (SM) | 24h |  | 550 | 550 |  |
| 92 | 4.5.3 | **Sprint 2** |  | 10d | 2020-02-05 | 2020-02-18 |  |  |  | 2020-01-23 | 2020-02-05 | 10d | 3d |  |  |  | 240h |  | 5,500 | 5,500 |  |
| 93 | 4.5.3.1 | Plan The Sprint |  | 1d | 2020-02-05 | 2020-02-05 | 91 |  |  | 2020-01-23 | 2020-01-23 | 1d | 3d | 0d |  | Scrum Master; Consultant 1 (SM); Consultant 2 (SM) | 24h |  | 550 | 550 |  |
| 94 | 4.5.3.2 | Realize The Sprint |  | 8d | 2020-02-06 | 2020-02-17 | 93 |  |  | 2020-01-24 | 2020-02-04 | 8d | 3d | 0d |  | Scrum Master; Consultant 2 (SM); Consultant 1 (SM) | 192h |  | 4,400 | 4,400 |  |
| 95 | 4.5.3.3 | Review The Results |  | 1d | 2020-02-18 | 2020-02-18 | 94 |  |  | 2020-02-05 | 2020-02-05 | 1d | 3d | 0d |  | Scrum Master; Consultant 2 (SM); Consultant 1 (SM) | 24h |  | 550 | 550 |  |
| 96 | 4.5.4 | **Sprint 3** |  | 10d | 2020-02-19 | 2020-03-03 |  |  |  | 2020-02-06 | 2020-02-19 | 10d | 3d |  |  |  | 240h |  | 5,500 | 5,500 |  |
| 97 | 4.5.4.1 | Plan The Sprint |  | 1d | 2020-02-19 | 2020-02-19 | 95 |  |  | 2020-02-06 | 2020-02-06 | 1d | 3d | 0d |  | Scrum Master; Consultant 1 (SM); Consultant 2 (SM) | 24h |  | 550 | 550 |  |
| 98 | 4.5.4.2 | Realize The Sprint |  | 8d | 2020-02-20 | 2020-03-02 | 97 |  |  | 2020-02-07 | 2020-02-18 | 8d | 3d | 0d |  | Scrum Master; Consultant 1 (SM); Consultant 2 (SM) | 192h |  | 4,400 | 4,400 |  |
| 99 | 4.5.4.3 | Review The Results |  | 1d | 2020-03-03 | 2020-03-03 | 98 |  |  | 2020-02-19 | 2020-02-19 | 1d | 3d | 0d |  | Scrum Master; Consultant 1 (SM); Consultant 2 (SM) | 24h |  | 550 | 550 |  |
| 100 | 4.5.5 | Sprints Completed | milestone | 0d | 2020-03-03 | 2020-03-03 | 99 |  |  | 2020-02-19 | 2020-02-19 | 0d | 3d |  |  |  |  |  |  |  |  |
| 101 | 4.6 | **Integration Tests** |  | 5d | 2020-03-09 | 2020-03-13 |  |  |  | 2020-02-21 | 2020-02-27 | 5d | 0d |  |  |  | 440h |  | 6,000 | 6,000 |  |
| 102 | 4.6.1 | Integration Test Every Module |  | 5d | 2020-03-09 | 2020-03-13 | 100, 85 |  |  | 2020-02-21 | 2020-02-27 | 5d | 0d |  |  | Technical Coordinator [50%]; Consultant 1 (TC) [50%]; HRD Delegate; ISTRetail Technical Coordinator [50%]; Scrum Master [50%]; Consultant 1 (SM) [50%]; Consultant 2 (SM) [50%]; Consultant 2 (TC) [50%]; Trainee [50%]; IT Infrastructure Specialist [50%]; Trainee (ISTRetail) [50%] | 240h |  | 3,000 | 3,000 |  |
| 103 | 4.6.2 | Fix Bugs |  | 5d | 2020-03-09 | 2020-03-13 | 102FF |  |  | 2020-02-21 | 2020-02-27 | 5d | 0d |  |  | Technical Coordinator [50%]; Consultant 1 (TC) [50%]; Consultant 1 (SM) [50%]; Consultant 2 (SM) [50%]; Consultant 2 (TC) [50%]; Scrum Master [50%]; Trainee [50%]; IT Infrastructure Specialist [50%]; Trainee (ISTRetail) [50%]; ISTRetail Technical Coordinator [50%] | 200h |  | 3,000 | 3,000 |  |
| 104 | 4.6.3 | Passed All Integration Tests | milestone | 0d | 2020-03-13 | 2020-03-13 | 103 |  |  | 2020-02-27 | 2020-02-27 | 0d | 0d |  |  |  |  |  |  |  |  |

| ID | WBS | Task | Type | Duration | Start | Finish | Predecessors | Baseline start | Baseline finish | Baseline duration | Total slack | Free slack | Constraint | Resources | Work | Cost | Baseline cost |
| --- | --- | --- | --- | --- | --- | --- | --- | --- | --- | --- | --- | --- | --- | --- | --- | --- | --- |
| 105 | 5 | **Transition** |  | 30d | 2020-02-28 | 2020-04-09 |  | 2019-12-30 | 2020-03-25 | 62d | 0d |  |  |  | 1224h | 16,100 | 16,100 |
| 106 | 5.1 | **Hardware and Infrastructure** |  | 3d | 2020-02-28 | 2020-03-03 |  | 2019-12-30 | 2020-01-02 | 3d |  |  |  |  | 24h |  |  |
| 107 | 5.1.1 | Planning of the setup |  | 1d | 2020-02-28 | 2020-02-28 | 43 | 2019-12-30 | 2019-12-30 | 1d | 8d | 0d | finish no earlier than 2020-02-28 | ISTRetail Technical Coordinator [50%]; IT Infrastructure Specialist |  |  |  |
| 108 | 5.1.2 | Setup of Hardware and Infrastructure |  | 2d | 2020-03-02 | 2020-03-03 | 107 | 2019-12-31 | 2020-01-02 | 2d | 8d | 0d |  | ISTRetail Technical Coordinator [50%]; IT Infrastructure Specialist | 24h |  |  |
| 109 | 5.1.3 | Hardware and Infrastructure Installed | milestone | 0d | 2020-03-03 | 2020-03-03 | 108 | 2020-01-02 | 2020-01-02 | 0d | 8d |  |  |  |  |  |  |
| 110 | 5.2 | **Software Installation** |  | 3d | 2020-03-16 | 2020-03-18 |  | 2020-02-28 | 2020-03-03 | 3d | 0d |  |  |  | 72h | 1,200 | 1,200 |
| 111 | 5.2.1 | Preparation of the environment for Installation |  | 1d | 2020-03-16 | 2020-03-16 | 109, 101 | 2020-02-28 | 2020-02-28 | 1d | 0d |  |  | Technical Coordinator; Consultant 1 (TC); ISTRetail Technical Coordinator | 24h | 400 | 400 |
| 112 | 5.2.2 | Installation of Software |  | 2d | 2020-03-17 | 2020-03-18 | 111 | 2020-03-02 | 2020-03-03 | 2d | 0d |  |  | Technical Coordinator; Consultant 1 (TC); ISTRetail Technical Coordinator | 48h | 800 | 800 |
| 113 | 5.2.3 | Software Installed | milestone | 0d | 2020-03-18 | 2020-03-18 | 112 | 2020-03-03 | 2020-03-03 | 0d | 0d |  |  |  |  |  |  |
| 114 | 5.3 | **Data Migration** |  | 2d | 2020-03-19 | 2020-03-20 |  | 2020-03-04 | 2020-03-05 | 2d | 0d |  |  |  | 80h | 1,300 | 1,300 |
| 115 | 5.3.1 | Prepare the system to receive training data |  | 1d | 2020-03-19 | 2020-03-19 | 113 | 2020-03-04 | 2020-03-04 | 1d | 0d |  |  | Technical Coordinator; Consultant 1 (TC); Trainee; Consultant 2 (TC); ISTRetail Technical Coordinator | 40h | 650 | 650 |
| 116 | 5.3.2 | Migrate training information to the system |  | 1d | 2020-03-20 | 2020-03-20 | 115 | 2020-03-05 | 2020-03-05 | 1d | 0d |  |  | Technical Coordinator; Consultant 1 (TC); Consultant 2 (TC); Trainee; ISTRetail Technical Coordinator | 40h | 650 | 650 |
| 117 | 5.3.3 | Data Migrated | milestone | 0d | 2020-03-20 | 2020-03-20 | 116 | 2020-03-05 | 2020-03-05 | 0d | 0d |  |  |  |  |  |  |
| 118 | 5.4 | **Training** |  | 4d | 2020-03-23 | 2020-03-26 |  | 2020-03-06 | 2020-03-11 | 4d | 0d |  |  |  | 80h | 1,600 | 1,600 |
| 119 | 5.4.1 | Train The HRD Staff To Use The Software |  | 2d | 2020-03-23 | 2020-03-24 | 117 | 2020-03-06 | 2020-03-09 | 2d | 0d |  |  | Technical Coordinator; Consultant 2 (TC); HRD Delegate | 48h | 800 | 800 |
| 120 | 5.4.2 | Train The DSI Staff To Use The Software |  | 2d | 2020-03-25 | 2020-03-26 | 119 | 2020-03-10 | 2020-03-11 | 2d | 0d |  |  | Technical Coordinator; Consultant 2 (TC) | 32h | 800 | 800 |
| 121 | 5.4.3 | Target Users Trained | milestone | 0d | 2020-03-26 | 2020-03-26 | 120 | 2020-03-11 | 2020-03-11 | 0d | 0d |  |  |  |  |  |  |
| 122 | 5.5 | **System Tests** |  | 5d | 2020-03-27 | 2020-04-02 |  | 2020-03-12 | 2020-03-18 | 5d | 0d |  |  |  | 400h | 6,000 | 6,000 |
| 123 | 5.5.1 | Run System Tests |  | 5d | 2020-03-27 | 2020-04-02 | 121 | 2020-03-12 | 2020-03-18 | 5d | 0d |  |  | ISTRetail Technical Coordinator; IT Infrastructure Specialist; Trainee (ISTRetail) | 120h |  |  |
| 124 | 5.5.2 | Fix Bugs |  | 5d | 2020-03-27 | 2020-04-02 | 123FF | 2020-03-12 | 2020-03-18 | 5d | 0d |  |  | Technical Coordinator; Consultant 1 (TC); Consultant 2 (TC); Trainee; Scrum Master; Consultant 1 (SM); Consultant 2 (SM) | 280h | 6,000 | 6,000 |
| 125 | 5.5.3 | Project Transition Completed | milestone | 0d | 2020-04-02 | 2020-04-02 | 124 | 2020-03-18 | 2020-03-18 | 0d | 0d |  |  |  |  |  |  |
| 126 | 5.6 | **Acceptance Tests** |  | 5d | 2020-04-03 | 2020-04-09 |  | 2020-03-19 | 2020-03-25 | 5d | 0d |  |  |  | 568h | 6,000 | 6,000 |
| 127 | 5.6.1 | Run Acceptance Tests |  | 5d | 2020-04-03 | 2020-04-09 | 125 | 2020-03-19 | 2020-03-25 | 5d | 0d |  |  | HRD Delegate; HR Employee Record Specialist; HR Payroll Specialist; HR Training Management Specialist; HRD Director [10%]; SID Director [10%] | 168h |  |  |
| 128 | 5.6.2 | Fix Bugs |  | 5d | 2020-04-03 | 2020-04-09 | 127FF | 2020-03-19 | 2020-03-25 | 5d | 0d |  |  | Technical Coordinator; Consultant 1 (TC); Consultant 2 (TC); Trainee; Scrum Master; Consultant 1 (SM); Consultant 2 (SM); ISTRetail Technical Coordinator; Trainee (ISTRetail); IT Infrastructure Specialist | 400h | 6,000 | 6,000 |
| 129 | 5.6.3 | Acceptance Tests Approved | milestone | 0d | 2020-04-09 | 2020-04-09 | 128 | 2020-03-25 | 2020-03-25 | 0d | 0d |  |  |  |  |  |  |

| ID | WBS | Task | Duration | Start | Finish | Predecessors | Baseline start | Baseline finish | Baseline duration | Total slack | Resources | Work | Cost | Baseline cost |
| --- | --- | --- | --- | --- | --- | --- | --- | --- | --- | --- | --- | --- | --- | --- |
| 130 | 6 | **Operation** | 65d | 2020-04-13 | 2020-07-14 |  | 2020-03-26 | 2020-06-29 | 65d | 0d |  | 188h | 4,125 | 4,125 |
| 131 | 6.1 | Support | 1w | 2020-04-13 | 2020-04-17 | 129 | 2020-03-26 | 2020-04-01 | 1w | 0d | Technical Coordinator [50%]; Consultant 1 (TC); Consultant 2 (TC); Trainee | 140h | 2,625 | 2,625 |
| 132 | 6.2 | Warranty | 3mo | 2020-04-20 | 2020-07-14 | 131 | 2020-04-02 | 2020-06-29 | 3mo | 0d | Technical Coordinator [10%] | 48h | 1,500 | 1,500 |
